# GPS-XAR

Schedule from MS Project, 2007-04-02 to 2008-07-18, A marks actual dates.
Project Schedule
NCICB

## Calendars

- Standard: Mon-Fri 08:00-12:00, 13:00-17:00; Sat-Sun off.

## Resources

| Resource |
| --- |
| smatyas |
| bgendleman |
| smiller |
| kkanchinadam |

## Schedule

| ID | WBS | Task | Duration | Start | Finish | Predecessors | Complete | Remaining | Baseline start | Baseline finish | Baseline duration | Total slack | Constraint | Deadline | Resources | Work | Actual work |
| --- | --- | --- | --- | --- | --- | --- | --- | --- | --- | --- | --- | --- | --- | --- | --- | --- | --- |
| 1 | 1 | **protExpress 1.0** | 340d? | 2007-04-02 A | 2008-07-18 |  | 37% | 215.8d? | 2007-04-02 | 2007-05-21 | 35.75d? | 0d |  |  |  | 294.2h | 223.2h |
| 2 | 1.1 | **Inception Phase** | 41d? | 2007-04-02 A | 2007-05-28 |  | 97% | 1.13d? | 2007-04-02 | 2007-05-15 | 32d | 0d |  |  |  | 221.4h | 203.2h |
| 3 | 1.1.1 | **Inception Iteration 1** | 41d? | 2007-04-02 A | 2007-05-28 |  | 97% | 1.13d? | 2007-04-02 | 2007-05-15 | 32d | 0d |  |  |  | 221.4h | 203.2h |
| 4 | 1 | **Project Management** | 31d? | 2007-04-06 A | 2007-05-18 A |  | 100% |  | 2007-04-02 | 2007-05-15 | 31.25d |  |  |  |  | 16h | 16h |
| 5 | 1.1.1.1.1 | Plan the project | 1d? | 2007-04-06 A | 2007-04-06 A |  | 100% |  | 2007-04-02 | 2007-04-19 | 12d |  | start no earlier than 2007-04-02 |  | bgendleman [20%]; kkanchinadam | 16h | 16h |
| 6 | 1.4 | Plan Remainder of Initial Iteration | 1d? | 2007-04-19 A | 2007-04-19 A |  | 100% |  | 2007-04-19 | 2007-04-19 | 1d |  | start no earlier than 2007-04-19 |  |  |  |  |
| 7 | 1.8 | Plan for Next Iteration | 1d | 2007-05-18 A | 2007-05-18 A |  | 100% |  | 2007-05-07 | 2007-05-11 | 5d |  |  |  |  |  |  |
| 8 | 1.1.1.1.4 | **Finalize Deliverables** | 3d? | 2007-05-11 A | 2007-05-15 A |  | 100% |  | 2007-04-02 | 2007-05-15 | 31.25d |  |  |  |  |  |  |
| 9 | 1.1.1.1.4.1 | April Status Report | 1d? | 2007-05-15 A | 2007-05-15 A |  | 100% |  | 2007-05-15 | 2007-05-15 | 2h |  | start no earlier than 2007-05-15 | 2007-05-15 |  |  |  |
| 10 | 1.1.1.1.4.2 | May Status Report | 1d? | 2007-05-11 A | 2007-05-11 A |  | 100% |  |  |  |  |  | start no earlier than 2007-05-11 |  |  |  |  |
| 11 | 1.1.1.1.4.3 | Release Risk List | 1d? | 2007-05-11 A | 2007-05-11 A |  | 100% |  | 2007-04-02 | 2007-04-02 | 2h |  | start no earlier than 2007-05-11 | 2007-05-15 |  |  |  |
| 12 | 3 | **Requirements** | 39.9d? | 2007-04-02 A | 2007-05-25 A |  | 100% |  | 2007-04-02 | 2007-05-14 | 30.35d |  |  |  |  | 105.6h | 105.6h |
| 13 | 3.2 | Elicit Stakeholder Needs | 5.38d | 2007-04-06 A | 2007-04-13 A | 5SS | 100% |  | 2007-04-04 | 2007-05-04 | 22.75d |  |  |  |  |  |  |
| 14 | 3.3 | Identify and Describe Use Cases | 7d | 2007-04-18 A | 2007-05-04 A |  | 100% |  | 2007-04-18 | 2007-04-23 | 4d |  | finish no earlier than 2007-04-20 |  | bgendleman | 56h | 56h |
| 15 | 3.5 | Refine the System Definition | 2.5d | 2007-05-04 A | 2007-05-17 A | 6, 14 | 100% |  | 2007-04-24 | 2007-05-10 | 6.25d |  | start no earlier than 2007-04-18 |  | bgendleman | 20h | 20h |
| 16 | 1.1.1.2.4 | **Implement Requirement and Test Traceability** | 4.5d | 2007-04-16 A | 2007-04-20 A |  | 100% |  | 2007-04-16 | 2007-04-20 | 4.6d |  |  |  |  | 3.6h | 3.6h |
| 17 | 1.1.1.2.4.1 | Determine Approach | 2.25d | 2007-04-16 A | 2007-04-20 A |  | 100% |  | 2007-04-16 | 2007-04-20 | 2.25d |  | start no earlier than 2007-04-16 |  | bgendleman [20%] | 3.6h | 3.6h |
| 18 | 1.1.1.2.5 | **Finalize Deliverables** | 39.9d? | 2007-04-02 A | 2007-05-25 A |  | 100% |  | 2007-04-02 | 2007-05-14 | 30.35d |  |  |  |  | 26h | 26h |
| 19 | 1.1.1.2.5.1 | Finalize ARC Document | 1d? | 2007-04-27 A | 2007-04-27 A |  | 100% |  |  |  |  |  | start no earlier than 2007-04-27 |  |  |  |  |
| 20 | 1.1.1.2.5.2 | Requirements Management Plan | 0.25d | 2007-05-11 A | 2007-05-11 A |  | 100% |  | 2007-04-02 | 2007-04-09 | 0.25d |  |  |  | bgendleman | 2h | 2h |
| 21 | 1.1.1.2.5.3 | Finalize Vision Document | 1d | 2007-05-14 A | 2007-05-24 A |  | 100% |  | 2007-04-30 | 2007-05-11 | 1d |  |  |  | bgendleman | 8h | 8h |
| 22 | 1.1.1.2.5.4 | Finalize Supplementary Spec | 1d | 2007-05-11 A | 2007-05-25 A | 21 | 100% |  | 2007-05-11 | 2007-05-14 | 1d |  |  |  | bgendleman | 8h | 8h |
| 23 | 1.1.1.2.5.5 | Produce Use Case Summary | 0.5d | 2007-04-02 A | 2007-04-02 A |  | 100% |  |  |  |  |  |  |  |  |  |  |
| 24 | 1.1.1.2.5.6 | Finalize Use Case Model | 1d | 2007-04-27 A | 2007-05-11 A | 14 | 100% |  | 2007-04-27 | 2007-05-04 | 1d |  |  | 2007-05-04 | bgendleman | 8h | 8h |

| ID | WBS | Task | Type | Duration | Start | Finish | Predecessors | Complete | Remaining | Baseline start | Baseline finish | Baseline duration | Total slack | Constraint | Deadline | Resources | Work | Actual work |
| --- | --- | --- | --- | --- | --- | --- | --- | --- | --- | --- | --- | --- | --- | --- | --- | --- | --- | --- |
| 25 | 4 | **Analysis and Design** |  | 16d | 2007-05-07 A | 2007-05-28 A |  | 100% |  | 2007-04-02 | 2007-04-20 | 15d |  |  |  |  |  |  |
| 26 | 1.1.1.3.1 | Analyze PRIDE XML |  | 9d | 2007-05-09 A | 2007-05-21 A |  | 100% |  |  |  |  |  |  |  |  |  |  |
| 27 | 1.1.1.3.2 | Analyze CPAS 2.0 Data Model |  | 5d | 2007-05-07 A | 2007-05-11 A |  | 100% |  |  |  |  |  |  |  |  |  |  |
| 28 | 1.1.1.3.3 | Compare PRIDE and XAR |  | 5d | 2007-05-22 A | 2007-05-28 A | 26 | 100% |  |  |  |  |  |  |  |  |  |  |
| 29 | 1.1.1.3.4 | **Finalize Deliverables** |  | 3d | 2007-05-24 A | 2007-05-28 A |  | 100% |  | 2007-04-11 | 2007-04-19 | 6d |  |  |  |  |  |  |
| 30 | 1.1.1.3.4.1 | Release Candidate Software Architecture Document |  | 3d | 2007-05-24 A | 2007-05-28 A |  | 100% |  | 2007-04-11 | 2007-04-19 | 5d |  |  |  |  |  |  |
| 31 | 1.1.1.4 | **Implementation** |  | 2d | 2007-04-02 A | 2007-04-03 A |  | 100% |  | 2007-04-02 | 2007-05-15 | 32d |  |  |  |  |  |  |
| 32 | 1.1.1.4.1 | Install CPAS Locally/Reverse Engineer Data Model |  | 2d | 2007-04-02 A | 2007-04-03 A |  | 100% |  |  |  |  |  |  |  |  |  |  |
| 33 | 1.1.1.4.2 | Structure the Implementation Model |  | 2d | 2007-04-02 A | 2007-04-03 A |  | 100% |  | 2007-04-02 | 2007-04-04 | 1.5d |  | start no earlier than 2007-04-09 | 2007-04-06 |  |  |  |
| 34 | 5 | **Test** |  | 23.52d | 2007-04-02 A | 2007-05-03 |  | 33% | 15.75d | 2007-04-02 | 2007-05-15 | 31.07d | 17.48d |  |  |  | 27.8h | 9.6h |
| 35 | 1.1.1.5.1 | Meet with Indepdent QA |  | 2h | 2007-04-02 A | 2007-04-02 A |  | 100% |  | 2007-04-09 | 2007-04-09 | 2h |  | finish no later than 2007-04-27 | 2007-04-27 | bgendleman [80%] | 1.6h | 1.6h |
| 36 | 5.1 | Analyze and Identify Test Approach |  | 1d | 2007-04-02 A | 2007-04-27 A |  | 100% |  | 2007-04-02 | 2007-04-27 | 1d |  |  |  | smatyas; bgendleman | 8h | 8h |
| 37 | 1.1.1.5.3 | **Finalize Deliverables** |  | 4.02d | 2007-04-27 | 2007-05-03 |  |  |  | 2007-04-27 | 2007-05-04 | 5d | 17.48d |  |  |  | 18.2h |  |
| 38 | 1.1.1.5.3.1 | Release Test Plan |  | 2.53d | 2007-04-27 | 2007-05-03 | 36 |  |  | 2007-04-27 | 2007-05-04 | 2.5d | 17.48d |  |  | smatyas; bgendleman [25%] | 18.2h |  |
| 39 | 6 | **Environment** |  | 36d | 2007-04-09 A | 2007-05-28 A |  | 100% |  | 2007-04-02 | 2007-05-14 | 30.25d |  |  |  |  | 42h | 42h |
| 40 | 1.1.1.6.1 | Establish Development Environment |  | 20d | 2007-05-01 A | 2007-05-28 A |  | 100% |  |  |  |  |  | finish no earlier than 2007-05-25 |  |  |  |  |
| 41 | 1.1.1.6.2 | Launch Development Process |  | 3h | 2007-04-09 A | 2007-04-09 A |  | 100% |  | 2007-04-09 | 2007-04-18 | 6h |  | start no earlier than 2007-04-09 |  | smatyas; smiller | 6h | 6h |
| 42 | 1.1.1.6.3 | **Finalize Deliverables** |  | 25d | 2007-04-16 A | 2007-05-18 A |  | 100% |  | 2007-04-19 | 2007-05-14 | 17.25d |  |  |  |  | 36h | 36h |
| 43 | 1.1.1.6.3.1 | Release Development Case |  | 0.25d | 2007-05-14 A | 2007-05-14 A |  | 100% |  | 2007-05-14 | 2007-05-14 | 0.25d |  | start no earlier than 2007-05-14 |  |  |  |  |
| 44 | 1.1.1.6.3.2 | Release Guidelines for the Project |  | 1.25d | 2007-04-16 A | 2007-04-17 A |  | 100% |  | 2007-04-20 | 2007-04-23 | 1.25d |  | start no earlier than 2007-04-16 |  |  |  |  |
| 45 | 1.1.1.6.3.3 | Release Templates for the Project |  | 9d | 2007-04-17 A | 2007-05-18 A |  | 100% |  | 2007-04-19 | 2007-04-30 | 5.55d |  | finish no earlier than 2007-04-13 |  | smiller [50%] | 36h | 36h |
| 46 | 7 | **Configuration & Change Management** |  | 32.11d | 2007-04-02 A | 2007-05-16 A |  | 100% |  | 2007-04-02 | 2007-05-15 | 31.25d |  |  |  |  | 30h | 30h |
| 47 | 7.1 | Plan Project Configuration and Change Control |  | 1d | 2007-04-20 A | 2007-04-23 A |  | 100% |  | 2007-04-20 | 2007-04-24 | 0.55d |  | finish no earlier than 2007-04-20 | 2007-05-15 | bgendleman | 8h | 8h |
| 48 | 1.1.1.7.2 | **Finalize Deliverables** |  | 32.11d | 2007-04-02 A | 2007-05-16 A |  | 100% |  | 2007-04-02 | 2007-05-15 | 31.25d |  |  |  |  | 22h | 22h |
| 49 | 1.1.1.7.2.1 | Release Configuration Management Plan |  | 0.75d | 2007-04-02 A | 2007-05-16 A |  | 100% |  | 2007-04-02 | 2007-05-15 | 0.75d |  |  |  | bgendleman | 6h | 6h |
| 50 | 1.1.1.7.2.2 | G-Forge Implementation of the Change Control Process |  | 2d | 2007-04-02 A | 2007-05-16 A |  | 100% |  | 2007-04-02 | 2007-05-14 | 2d |  |  |  | bgendleman | 16h | 16h |
| 51 | 1.1.1.8 | Inception Complete | milestone | 0d | 2007-05-28 A | 2007-05-28 A | 4, 5, 18, 8, 37, 42, 48 | 100% |  | 2007-05-15 | 2007-05-15 | 0d |  | start no earlier than 2007-05-28 | 2007-05-15 |  |  |  |

Notes:
- 27: - installed cpas local / - reverse engineered the data model
- 44: UML, Java, JSP/HTML
- 45: Java, JSP/HTML / Use Case Summary / Use Case Specification / Vision / Traceability Matrix - will attempt to do in EA

| ID | WBS | Task | Duration | Start | Finish | Predecessors | Complete | Remaining | Baseline start | Baseline finish | Baseline duration | Total slack | Free slack | Constraint | Resources | Work | Actual work |
| --- | --- | --- | --- | --- | --- | --- | --- | --- | --- | --- | --- | --- | --- | --- | --- | --- | --- |
| 52 | 1.2 | **Elaboration Phase** | 49d? | 2007-05-29 A | 2007-08-03 | 3 | 35% | 31.74d? | 2007-05-15 | 2007-05-17 | 2.5d? | 250d |  |  |  | 72.8h | 20h |
| 53 | 1.2.1 | **Elaboration - Iteration 1** | 32d | 2007-05-29 A | 2007-07-11 |  | 59% | 13.26d | 2007-05-15 | 2007-05-17 | 2.5d | 246d |  |  |  | 20h | 20h |
| 54 | 1.2.1.1 | **Project Management** | 8d | 2007-05-29 A | 2007-06-07 | 51 | 81% | 1.52d |  |  |  | 270d |  |  |  | 20h | 20h |
| 55 | 1.2.1.1.1 | Iteration Post Mortem - Inception | 20h | 2007-05-29 A | 2007-05-31 A |  | 100% |  | 2007-05-15 | 2007-05-17 | 20h |  |  | start no earlier than 2007-05-23 | smatyas | 20h | 20h |
| 56 | 1.2.1.1.2 | Plan Iteration | 1d | 2007-05-29 A | 2007-05-29 A |  | 100% |  |  |  |  |  |  |  |  |  |  |
| 57 | 1.2.1.1.3 | Trip to Indianapolis - CPAS | 4d | 2007-06-04 A | 2007-06-07 A |  | 100% |  |  |  |  |  |  | start no earlier than 2007-06-04 |  |  |  |
| 58 | 1.2.1.1.4 | Plan for Next Iteration | 1d | 2007-05-29 A | 2007-05-29 |  | 50% | 0.5d |  |  |  | 115d |  |  |  |  |  |
| 59 | 1.2.1.1.5 | **Finalize Deliverables** | 1d | 2007-05-29 A | 2007-05-29 |  | 25% | 0.75d |  |  |  | 277d |  |  |  |  |  |
| 60 | 1.2.1.1.5.1 | Update Project Plan | 1d | 2007-05-29 A | 2007-05-29 |  | 50% | 0.5d |  |  |  | 115d |  |  |  |  |  |
| 61 | 1.2.1.1.5.2 | Update Risk List | 1d | 2007-05-29 | 2007-05-29 |  |  |  |  |  |  | 116d |  |  |  |  |  |
| 62 | 1.2.1.2 | **Requirements** | 9d | 2007-05-29 A | 2007-06-08 |  | 73% | 2.45d |  |  |  | 269d |  |  |  |  |  |
| 63 | 1.2.1.2.1 | Incorporate Stakeholder Comments into Vision and Supplemental Specs | 2d | 2007-05-29 A | 2007-05-30 A |  | 100% |  |  |  |  |  |  |  |  |  |  |
| 64 | 1.2.1.2.2 | **Finalize Deliverables** | 9d | 2007-05-29 A | 2007-06-08 |  | 67% | 3d |  |  |  | 269d |  |  |  |  |  |
| 65 | 1.2.1.2.2.1 | Detail Registration and Login UC | 5d | 2007-05-29 A | 2007-06-04 |  | 50% | 2.5d |  |  |  | 111d |  | finish no earlier than 2007-06-04 |  |  |  |
| 66 | 1.2.1.2.2.2 | Detail Manage Protocol | 3d | 2007-06-05 A | 2007-06-07 A | 65 | 100% |  |  |  |  |  |  |  |  |  |  |
| 67 | 1.2.1.2.2.3 | Parse and Validate Proteomic Experiment File UC | 1d | 2007-06-08 A | 2007-06-08 | 66 | 50% | 0.5d |  |  |  | 107d |  |  |  |  |  |
| 68 | 1.2.1.3 | **Analysis and Design** | 21d | 2007-05-29 A | 2007-06-26 |  | 85% | 3.19d |  |  |  | 257d |  |  |  |  |  |
| 69 | 1.2.1.3.1 | Investigate EBI vs. EVS Ontology | 5d | 2007-05-29 A | 2007-06-04 A |  | 100% |  |  |  |  |  |  |  |  |  |  |
| 70 | 1.2.1.3.2 | Object Model for Experiment Annotation | 8d | 2007-06-08 A | 2007-06-19 A | 57 | 100% |  |  |  |  |  |  |  |  |  |  |
| 71 | 1.2.1.3.3 | Create Data Model | 5d | 2007-06-20 A | 2007-06-26 | 70 | 15% | 4.25d |  |  |  | 95d |  |  |  |  |  |
| 72 | 1.2.1.3.4 | Design of Conversion to XAR or PRIDE | 10d | 2007-06-08 A | 2007-06-21 A | 70 | 100% |  |  |  |  |  |  |  |  |  |  |
| 73 | 1.2.1.4 | **Implementation** | 18d | 2007-06-13 A | 2007-07-06 |  | 26% | 13.29d |  |  |  | 246d |  |  |  |  |  |
| 74 | 1.2.1.4.1 | Create Database | 3d | 2007-06-14 A | 2007-06-18 A |  | 100% |  |  |  |  |  |  |  |  |  |  |
| 75 | 1.2.1.4.2 | Representative XML Produced | 13d | 2007-06-13 A | 2007-06-29 |  | 19% | 10.5d |  |  |  | 158d | 0d | start no earlier than 2007-06-13 |  |  |  |
| 76 | 1.2.1.4.3 | UI for Protocol Annotation | 5d | 2007-07-02 | 2007-07-06 | 75 |  |  |  |  |  | 85d | 0d |  |  |  |  |

Notes:
- 69: Decision was to use both beginning with EVS
- 76: Deferred to E2

| ID | WBS | Task | Type | Duration | Start | Finish | Predecessors | Complete | Remaining | Total slack | Free slack | Constraint | Work |
| --- | --- | --- | --- | --- | --- | --- | --- | --- | --- | --- | --- | --- | --- |
| 77 | 1.2.1.5 | **Test** |  | 32d | 2007-05-29 A | 2007-07-11 |  | 20% | 25.6d | 246d |  |  |  |
| 78 | 1.2.1.5.1 | Request Test Environment |  | 1d | 2007-06-26 A | 2007-06-26 A |  | 100% |  |  |  | start no earlier than 2007-06-26 |  |
| 79 | 1.2.1.5.2 | Produce Test Plan |  | 1d | 2007-05-29 | 2007-05-29 |  |  |  | 116d |  |  |  |
| 80 | 1.2.1.5.3 | Junit Tests for Targeted UC |  | 3d | 2007-07-09 | 2007-07-11 | 76 |  |  | 85d |  |  |  |
| 81 | 1.2.1.6 | **Environment** |  | 7.75d | 2007-05-29 A | 2007-06-07 |  | 63% | 2.91d | 270.25d |  |  |  |
| 82 | 1.2.1.6.1 | Development Environment Available |  | 1w | 2007-05-29 A | 2007-06-04 A |  | 100% |  |  |  |  |  |
| 83 | 1.2.1.6.2 | **Set Up Tools** |  | 2.75d | 2007-06-05 A | 2007-06-07 | 82 | 25% | 2.06d | 270.25d |  |  |  |
| 84 | 1.2.1.6.2.1 | Set Up Maven |  | 1d | 2007-06-05 | 2007-06-05 |  |  |  | 111d |  |  |  |
| 85 | 1.2.1.6.2.2 | Set Up Continuous Integration |  | 1d | 2007-06-05 | 2007-06-05 | 82 |  |  | 111d |  |  |  |
| 86 | 1.2.1.6.2.3 | Set Up Eclipse |  | 1d | 2007-06-05 A | 2007-06-05 A | 85 | 100% |  |  |  |  |  |
| 87 | 1.2.1.6.2.4 | Set Up Selenium |  | 1d | 2007-06-06 | 2007-06-06 | 86 |  |  | 109.25d | 0d |  |  |
| 88 | 1.2.1.6.2.5 | Set Up Code Quality Tools |  | 1d | 2007-06-05 A | 2007-06-07 | 87 | 25% | 0.75d | 270.25d |  |  |  |
| 89 | 1.2.1.7 | Elabortion Iteration 1 Complete | milestone | 0d | 2007-06-29 | 2007-06-29 | 75 |  |  | 158d | 0d |  |  |
| 90 | 1.2.1.8 | Vacation |  | 5d | 2007-07-02 | 2007-07-06 | 89 |  |  | 158d | 0d |  |  |
| 91 | 1.2.2 | **Elaboration - Iteration 2** |  | 20d? | 2007-07-09 | 2007-08-03 | 90 |  |  | 158d |  |  | 52.8h |
| 92 | 1.2.2.1 | **Project Management** |  | 1d | 2007-07-09 | 2007-07-09 |  |  |  | 248d |  |  |  |
| 93 | 1.2.2.1.1 | Iteration Post Mortem - E1 |  | 1d | 2007-07-09 | 2007-07-09 |  |  |  | 87d |  |  |  |
| 94 | 1.2.2.1.2 | Plan Iteration |  | 1d | 2007-07-09 | 2007-07-09 |  |  |  | 87d |  |  |  |
| 95 | 1.2.2.1.3 | Plan for Next Iteration |  | 1d | 2007-07-09 | 2007-07-09 |  |  |  | 87d |  |  |  |
| 96 | 1.2.2.2 | **Requirements** |  | 2d | 2007-07-09 | 2007-07-10 |  |  |  | 247d |  |  |  |
| 97 | 1.2.2.2.1 | Incorporate Stakeholder Use Case Feedback |  | 2d | 2007-07-09 | 2007-07-10 |  |  |  | 86d |  |  |  |
| 98 | 1.2.2.2.2 | **Finalize Deliverables** |  | 2d | 2007-07-09 | 2007-07-10 |  |  |  | 247d |  |  |  |
| 99 | 1.2.2.2.2.1 | Detail Registration Use Case |  | 1d | 2007-07-09 | 2007-07-09 |  |  |  | 87d |  |  |  |
| 100 | 1.2.2.2.2.2 | Detail Manage Experiments |  | 2d | 2007-07-09 | 2007-07-10 |  |  |  | 86d |  |  |  |
| 101 | 1.2.2.2.2.3 | Validation Requirements of XAR and Pride |  | 2d | 2007-07-09 | 2007-07-10 |  |  |  | 86d |  |  |  |

Notes:
- 84: Determined that Maven is premature

| ID | WBS | Task | Type | Duration | Start | Finish | Predecessors | Baseline start | Baseline finish | Baseline duration | Total slack | Free slack | Resources | Work |
| --- | --- | --- | --- | --- | --- | --- | --- | --- | --- | --- | --- | --- | --- | --- |
| 102 | 1.2.2.3 | **Analysis and Design** |  | 7d | 2007-07-09 | 2007-07-17 |  |  |  |  | 158d |  |  |  |
| 103 | 1.2.2.3.1 | Update Software Architecture Document |  | 2d | 2007-07-09 | 2007-07-10 |  |  |  |  | 158d | 0d |  |  |
| 104 | 1.2.2.3.2 | Refine Design of XAR and Pride Conversion |  | 5d | 2007-07-11 | 2007-07-17 | 103 |  |  |  | 158d | 0d |  |  |
| 105 | 1.2.2.3.3 | Specify EVS Access |  | 3d | 2007-07-09 | 2007-07-11 |  |  |  |  | 73d | 0d |  |  |
| 106 | 1.2.2.3.4 | Specify EBI Access Method |  | 3d | 2007-07-12 | 2007-07-16 | 105 |  |  |  | 82d |  |  |  |
| 107 | 1.2.2.4 | **Implementation** |  | 20d | 2007-07-09 | 2007-08-03 |  |  |  |  | 229d |  |  |  |
| 108 | 1.2.2.4.1 | Produce Representative XML |  | 5d | 2007-07-09 | 2007-07-13 |  |  |  |  | 83d |  |  |  |
| 109 | 1.2.2.4.2 | Build Manage Protocol UI |  | 8d | 2007-07-09 | 2007-07-18 |  |  |  |  | 68d | 0d |  |  |
| 110 | 1.2.2.4.3 | Build Manage Experiments UI |  | 12d | 2007-07-19 | 2007-08-03 | 105, 109 |  |  |  | 68d | 0d |  |  |
| 111 | 1.2.2.5 | **Test** |  | 10d | 2007-07-09 | 2007-07-20 |  |  |  |  | 239d |  |  |  |
| 112 | 1.2.2.5.1 | Produce Test Plan |  | 1d | 2007-07-09 | 2007-07-09 |  |  |  |  | 87d |  |  |  |
| 113 | 1.2.2.5.2 | Junit Tests for Targeted UC |  | 2d | 2007-07-19 | 2007-07-20 | 109 |  |  |  | 78d |  |  |  |
| 114 | 1.2.2.6 | **Environment** |  | 2d | 2007-07-09 | 2007-07-10 |  |  |  |  | 247d |  |  | 52.8h |
| 115 | 1.2.2.6.1 | Test Environment Available |  | 1d | 2007-07-09 | 2007-07-09 |  |  |  |  | 87d |  |  |  |
| 116 | 1.2.2.6.2 | Installation Document |  | 1d | 2007-07-09 | 2007-07-09 |  |  |  |  | 87d |  |  |  |
| 117 | 1.2.2.6.3 | **Set Up Tools** |  | 2d | 2007-07-09 | 2007-07-10 |  |  |  |  | 247d |  |  | 52.8h |
| 118 | 1.2.2.6.3.1 | Set Up Continuous Integration |  | 2d | 2007-07-09 | 2007-07-10 |  |  |  |  | 247d |  | kkanchinadam; smatyas [10%] | 17.6h |
| 119 | 1.2.2.6.3.2 | Set Up Selenium |  | 2d | 2007-07-09 | 2007-07-10 |  |  |  |  | 247d |  | kkanchinadam; smatyas [10%] | 17.6h |
| 120 | 1.2.2.6.3.3 | Set Up Code Quality Tools |  | 2d | 2007-07-09 | 2007-07-10 |  |  |  |  | 247d |  | kkanchinadam; smatyas [10%] | 17.6h |
| 121 | 1.2.2.7 | **Configuration Management** |  | 1d? | 2007-07-09 | 2007-07-09 |  |  |  |  | 248d |  |  |  |
| 122 | 1.2.2.7.1 | Define Configuration Management Plan |  | 1d? | 2007-07-09 | 2007-07-09 |  |  |  |  | 87d |  |  |  |
| 123 | 1.2.2.8 | Elaboration Iteration 2 Complete | milestone | 0d | 2007-08-03 | 2007-08-03 | 110 |  |  |  | 68d |  |  |  |
| 124 | 1.3 | **Construction Phase** |  | 243d | 2007-07-18 | 2008-06-20 | 104 | 2007-05-17 | 2007-05-18 | 1d? | 0d |  |  |  |
| 125 | 1.3.1 | Construction - Iteration 1 |  | 4w | 2007-07-18 | 2007-08-14 |  | 2007-05-17 | 2007-05-18 | 1d? | 158d | 0d |  |  |

| ID | WBS | Task | Duration | Start | Finish | Predecessors | Total slack | Constraint |
| --- | --- | --- | --- | --- | --- | --- | --- | --- |
| 126 | 1.3.2 | **Implementation** | 60d | 2008-03-24 | 2008-06-13 | 125 | 0d |  |
| 127 | 1.3.2.1 | **Search Repository UC** | 12d | 2008-03-24 | 2008-04-08 |  | 0d |  |
| 128 | 1.3.2.1.1 | **Search Experiments** | 4d | 2008-03-24 | 2008-03-27 |  | 0d |  |
| 129 | 1.3.2.1.1.1 | Implement Experiment Search | 4d | 2008-03-24 | 2008-03-27 |  | 0d | start no earlier than 2008-03-24 |
| 130 | 1.3.2.1.2 | QA deliver | 1d | 2008-03-28 | 2008-03-28 | 129 | 0d |  |
| 131 | 1.3.2.1.3 | Bug Fixes | 1d | 2008-03-31 | 2008-03-31 | 130 | 0d |  |
| 132 | 1.3.2.1.4 | **Search Protocols** | 4d | 2008-04-01 | 2008-04-04 |  | 0d |  |
| 133 | 1.3.2.1.4.1 | Implement protocol Search | 4d | 2008-04-01 | 2008-04-04 | 131 | 0d |  |
| 134 | 1.3.2.1.5 | QA Delivery | 1d | 2008-04-07 | 2008-04-07 | 132 | 0d |  |
| 135 | 1.3.2.1.6 | Bug Fixes | 1d | 2008-04-08 | 2008-04-08 | 133, 134 | 0d |  |
| 136 | 1.3.2.2 | **Manage Experiments UC** | 40d | 2008-04-09 | 2008-06-03 | 135 | 0d |  |
| 137 | 1.3.2.2.1 | **Create new Experiment** | 9d | 2008-04-09 | 2008-04-21 |  | 0d |  |
| 138 | 1.3.2.2.1.1 | Overview page | 1d | 2008-04-09 | 2008-04-09 |  | 0d |  |
| 139 | 1.3.2.2.1.2 | Add/Edit Protocols Page | 2d | 2008-04-10 | 2008-04-11 | 138 | 0d |  |
| 140 | 1.3.2.2.1.3 | Add/Edit Inputs Page | 2d | 2008-04-14 | 2008-04-15 | 139 | 0d |  |
| 141 | 1.3.2.2.1.4 | Add/Edit Outputs Page | 2d | 2008-04-16 | 2008-04-17 | 140 | 0d |  |
| 142 | 1.3.2.2.1.5 | Review Protocol Page | 1d | 2008-04-18 | 2008-04-18 | 141 | 0d |  |
| 143 | 1.3.2.2.1.6 | Experiment Summary Page | 1d | 2008-04-21 | 2008-04-21 | 142 | 0d |  |
| 144 | 1.3.2.2.2 | Repeat Experiment | 2d | 2008-04-22 | 2008-04-23 | 143, 137 | 29d |  |
| 145 | 1.3.2.2.3 | QA Delivery | 1d | 2008-04-22 | 2008-04-22 | 137 | 0d |  |
| 146 | 1.3.2.2.4 | Bug Fixes | 1d | 2008-04-23 | 2008-04-23 | 145 | 0d |  |
| 147 | 1.3.2.2.5 | **Tree View** | 25d | 2008-04-24 | 2008-05-28 | 146 | 0d |  |
| 148 | 1.3.2.2.5.1 | **implement Tree using struts** | 25d | 2008-04-24 | 2008-05-28 |  | 0d |  |
| 149 | 1.3.2.2.5.1.1 | Design Tree Mechanism | 4d | 2008-04-24 | 2008-04-29 | 146 | 0d |  |

| ID | WBS | Task | Duration | Start | Finish | Predecessors | Total slack |
| --- | --- | --- | --- | --- | --- | --- | --- |
| 150 | 1.3.2.2.5.1.2 | **Tree Read Only** | 6d | 2008-04-30 | 2008-05-07 | 149 | 0d |
| 151 | 1.3.2.2.5.1.2.1 | Overview page | 1d | 2008-04-30 | 2008-04-30 |  | 0d |
| 152 | 1.3.2.2.5.1.2.2 | Protocols Page | 1d | 2008-05-01 | 2008-05-01 | 151 | 0d |
| 153 | 1.3.2.2.5.1.2.3 | Inputs Page | 1d | 2008-05-02 | 2008-05-02 | 152 | 0d |
| 154 | 1.3.2.2.5.1.2.4 | Outputs Page | 1d | 2008-05-05 | 2008-05-05 | 153 | 0d |
| 155 | 1.3.2.2.5.1.2.5 | Review Protocol Page | 1d | 2008-05-06 | 2008-05-06 | 154 | 0d |
| 156 | 1.3.2.2.5.1.2.6 | Experiment Summary Page | 1d | 2008-05-07 | 2008-05-07 | 155 | 0d |
| 157 | 1.3.2.2.5.1.3 | XAR File download | 2d | 2008-05-08 | 2008-05-09 | 150 | 0d |
| 158 | 1.3.2.2.5.1.4 | QA delivery | 1d | 2008-05-12 | 2008-05-12 | 157 | 0d |
| 159 | 1.3.2.2.5.1.5 | Bug Fixes | 1d | 2008-05-13 | 2008-05-13 | 158 | 0d |
| 160 | 1.3.2.2.5.1.6 | Stage Delivery?? | 1d | 2008-05-14 | 2008-05-14 | 159 | 0d |
| 161 | 1.4 | **Elaboration** | 1d? | 2007-04-02 | 2007-04-02 |  | 157d |
| 162 | 1.4.1 | Tree Edit | 9d | 2008-05-15 | 2008-05-27 | 160 | 0d |
| 163 | 1.5 | **Construction** | 1d? | 2007-04-02 | 2007-04-02 |  | 157d |
| 164 | 1.5.1 | Overview page | 1d | 2008-05-15 | 2008-05-15 |  | 0d |
| 165 | 1.6 | **Transition** | 1d? | 2007-04-02 | 2007-04-02 |  | 157d |
| 166 | 1.6.1 | **Add/Edit Protocols Page** | 2d | 2008-05-16 | 2008-05-19 | 164 | 0d |
| 167 | 1.6.1.1 | **Add/Edit Inputs Page** | 2d | 2008-05-20 | 2008-05-21 | 166 | 0d |
| 168 | 1.6.1.1.1 | **Add/Edit Outputs Page** | 2d | 2008-05-22 | 2008-05-23 | 167 | 0d |
| 169 | 1.6.1.1.1.1 | **Review Protocol Page** | 1d | 2008-05-26 | 2008-05-26 | 168 | 0d |
| 170 | 1.6.1.1.1.1.1 | Experiment Summary Page | 1d | 2008-05-27 | 2008-05-27 | 169 | 0d |
| 171 | 1.6.1.1.1.1.2 | Delete Expeirment Run | 1d | 2008-05-28 | 2008-05-28 | 162 | 0d |
| 172 | 1.6.1.1.2 | QA delivery | 1d | 2008-05-29 | 2008-05-29 | 147 | 0d |
| 173 | 1.6.1.1.3 | Bug Fixes | 2d | 2008-05-30 | 2008-06-02 | 172 | 0d |
| 174 | 1.6.1.1.4 | QA Delivery - after bug fixes | 1d | 2008-06-03 | 2008-06-03 | 173 | 0d |

| ID | WBS | Task | Type | Duration | Start | Finish | Predecessors | Baseline start | Baseline finish | Baseline duration | Total slack | Free slack |
| --- | --- | --- | --- | --- | --- | --- | --- | --- | --- | --- | --- | --- |
| 175 | 1.6.1.2 | **Register User UC** |  | 5d | 2008-06-04 | 2008-06-10 | 136 |  |  |  | 0d |  |
| 176 | 1.6.1.2.1 | **LDAP Integration for Registration** |  | 2d | 2008-06-04 | 2008-06-05 |  |  |  |  | 0d |  |
| 177 | 1.6.1.2.1.1 | Account Registration (email) |  | 1d | 2008-06-04 | 2008-06-04 |  |  |  |  | 0d |  |
| 178 | 1.6.1.2.1.2 | Implement UI (2 screens) |  | 1d | 2008-06-05 | 2008-06-05 | 177 |  |  |  | 0d |  |
| 179 | 1.6.1.2.2 | **User Management** |  | 3d | 2008-06-06 | 2008-06-10 | 176 |  |  |  | 0d |  |
| 180 | 1.6.1.2.2.1 | Implement User Add/Edit Page |  | 3d | 2008-06-06 | 2008-06-10 |  |  |  |  | 0d |  |
| 181 | 1.6.1.3 | QA delivery |  | 1d | 2008-06-11 | 2008-06-11 | 175 |  |  |  | 0d |  |
| 182 | 1.6.1.4 | Bug Fixes |  | 2d | 2008-06-12 | 2008-06-13 | 181 |  |  |  | 0d |  |
| 183 | 1.6.2 | **Final Product Delivery** |  | 5d | 2008-06-16 | 2008-06-20 | 182 |  |  |  | 0d |  |
| 184 | 1.6.2.1 | Zope Site Setup |  | 3d | 2008-06-16 | 2008-06-18 | 177 |  |  |  | 0d |  |
| 185 | 1.6.2.2 | Deploy to Production |  | 2d | 2008-06-19 | 2008-06-20 | 184 |  |  |  | 0d |  |
| 186 | 1.6.3 | Construction - Iteration 2 | milestone | 4w | 2008-03-28 | 2008-04-24 | 128 | 2007-05-17 | 2007-05-18 | 1d? | 21d | 0d |
| 187 | 1.6.4 | Construction - Iteration 3 |  | 4w | 2008-04-25 | 2008-05-22 | 186 |  |  |  | 21d |  |
| 188 | 1.6.5 | Release Candidate Delivered to QA |  | 1d | 2007-07-18 | 2007-07-18 |  |  |  |  | 242d |  |
| 189 | 1.7 | **Transition Phase** |  | 20d | 2008-06-23 | 2008-07-18 | 124, 188 | 2007-05-18 | 2007-05-21 | 1d? | 0d |  |
| 190 | 1.7.1 | Transition - Iteration 1 | milestone | 4w | 2008-06-23 | 2008-07-18 |  | 2007-05-18 | 2007-05-21 | 1d? | 0d |  |
| 191 | 2 | protExpress 1.x |  | 1d? | 2007-04-02 | 2007-04-02 |  |  |  |  | 318d |  |
